# 1752538_HuynhGiaAnTien_ParkingLot

How a schedule from MS Project changed from version to version. A marks actual dates.

## Version 1 (saved 2022-11-09, file lab2_ex3.mpp)

Note of the change: Commit all mpp files

| ID | WBS | Task | Duration | Start | Finish | Predecessors | Complete | Total float | Constraint |
| --- | --- | --- | --- | --- | --- | --- | --- | --- | --- |
| 1 | 1 | **IoT system** | 3mo? | 2022-10-31 A | 2023-01-20 |  | 1% |  |  |
| 2 | 1.1 | **Pre-development phase** | 4d? | 2022-10-31 | 2022-11-03 |  |  |  |  |
| 3 |  | Analysis and design | 1d | 2022-10-31 | 2022-10-31 |  |  |  |  |
| 4 | 1.1.2 | **Documents** | 3d? | 2022-11-01 | 2022-11-03 |  |  |  |  |
| 5 |  | Database design | 1.5d? | 2022-11-01 | 2022-11-02 | 3 |  | 0.76d | start no earlier than 2022-11-01 |
| 6 |  | Software design | 1d? | 2022-11-01 | 2022-11-01 |  |  | 3.75d | start no earlier than 2022-11-01 |
| 7 |  | Circuit design | 1d? | 2022-11-01 | 2022-11-01 |  |  | 46d |  |
| 8 |  | Requirements | 1d? | 2022-11-01 | 2022-11-01 | 3 |  | 3.75d |  |
| 9 |  | First meeting | 1h | 2022-11-03 | 2022-11-03 | 5, 6, 8 |  | 2.75d | start no earlier than 2022-11-03 |
| 10 | 1.2 | **Development phase** | 25d? | 2022-11-04 A | 2022-12-08 |  | 1% |  |  |
| 11 | 1.2.1 | **Database setup** | 4d | 2022-11-04 A | 2022-11-09 |  | 44% | 28d |  |
| 12 |  | Users module | 1d | 2022-11-04 A | 2022-11-07 | 9 | 88% | 27d | start no earlier than 2022-11-06 |
| 13 |  | Device management module | 1d | 2022-11-09 | 2022-11-09 | 12 |  | 28d | start no earlier than 2022-11-09 |
| 14 | 1.2.2 | **Backend** | 20.88d? | 2022-11-10 | 2022-12-08 |  |  | 0d |  |
| 15 | 1.2.2.1 | **Authentication** | 2d | 2022-11-14 | 2022-11-15 |  |  | 26d |  |
| 16 |  | Register | 2d | 2022-11-14 | 2022-11-15 | 11 |  | 36d |  |
| 17 |  | Login | 2d | 2022-11-14 | 2022-11-15 | 11 |  | 26d |  |
| 18 | 1.2.2.2 | **Main features** | 5d? | 2022-11-16 | 2022-11-22 |  |  | 36d |  |
| 19 |  | Device Controller module | 3d? | 2022-11-16 | 2022-11-22 | 15 |  | 36d |  |
| 20 |  | Automation module | 2d? | 2022-11-16 | 2022-11-21 | 15 |  | 37d |  |
| 21 | 1.2.2.3 | **Bug fixes** | 17.88d | 2022-11-15 | 2022-12-08 |  |  |  |  |
| 22 |  | Bug fixes 1 | 0.5d | 2022-11-10 | 2022-11-10 |  |  | 51.5d | start no earlier than 2022-11-10 |
| 23 |  | Bug fixes 2 | 0.5d | 2022-11-11 | 2022-11-11 |  |  | 50.5d | start no earlier than 2022-11-11 |
| 24 |  | Bug fixes 3 | 0.5d | 2022-11-14 | 2022-11-14 |  |  | 49.5d | start no earlier than 2022-11-14 |
| 25 |  | Bug fixes 4 | 0.5d | 2022-11-15 | 2022-11-15 |  |  | 48.5d | start no earlier than 2022-11-15 |
| 26 |  | Bug fixes 5 | 0.5d | 2022-11-16 | 2022-11-16 |  |  | 47.5d | start no earlier than 2022-11-16 |
| 27 |  | Bug fixes 6 | 0.5d | 2022-11-17 | 2022-11-17 |  |  | 46.5d | start no earlier than 2022-11-17 |
| 28 |  | Bug fixes 7 | 0.5d | 2022-11-18 | 2022-11-18 |  |  | 45.5d | start no earlier than 2022-11-18 |
| 29 |  | Bug fixes 8 | 0.5d | 2022-11-21 | 2022-11-21 |  |  | 44.5d | start no earlier than 2022-11-21 |
| 30 |  | Bug fixes 9 | 0.5d | 2022-11-22 | 2022-11-22 |  |  | 43.5d | start no earlier than 2022-11-22 |
| 31 |  | Bug fixes 10 | 0.5d | 2022-11-23 | 2022-11-23 |  |  | 42.5d | start no earlier than 2022-11-23 |
| 32 |  | Bug fixes 11 | 0.5d | 2022-11-24 | 2022-11-24 |  |  | 41.5d | start no earlier than 2022-11-24 |
| 33 |  | Bug fixes 12 | 0.5d | 2022-11-25 | 2022-11-25 |  |  | 40.5d | start no earlier than 2022-11-25 |
| 34 |  | Bug fixes 13 | 0.5d | 2022-11-28 | 2022-11-28 |  |  | 39.5d | start no earlier than 2022-11-28 |
| 35 |  | Bug fixes 14 | 0.5d | 2022-11-29 | 2022-11-29 |  |  | 38.5d | start no earlier than 2022-11-29 |
| 36 |  | Bug fixes 15 | 0.5d | 2022-11-30 | 2022-11-30 |  |  | 37.5d | start no earlier than 2022-11-30 |
| 37 |  | Bug fixes 16 | 0.5d | 2022-12-01 | 2022-12-01 |  |  | 36.5d | start no earlier than 2022-12-01 |
| 38 |  | Bug fixes 17 | 0.5d | 2022-12-02 | 2022-12-02 |  |  | 35.5d | start no earlier than 2022-12-02 |
| 39 |  | Bug fixes 18 | 0.5d | 2022-12-05 | 2022-12-05 |  |  | 34.5d | start no earlier than 2022-12-05 |
| 40 |  | Bug fixes 19 | 0.5d | 2022-12-06 | 2022-12-06 |  |  | 33.5d | start no earlier than 2022-12-06 |
| 41 |  | Bug fixes 20 | 0.5d | 2022-12-07 | 2022-12-07 |  |  | 32.5d | start no earlier than 2022-12-07 |
| 42 | 1.2.3 | **UI / UX designing** | 4d? | 2022-11-04 | 2022-11-09 |  |  | 30.5d |  |
| 43 |  | Color scheme | 2d? | 2022-11-04 | 2022-11-07 | 9 |  | 30.5d |  |
| 44 | 1.2.3.2 | **App** | 2d? | 2022-11-08 | 2022-11-09 |  |  | 30.5d |  |
| 45 |  | Wireframe | 1d? | 2022-11-08 | 2022-11-08 | 43 |  | 30.5d |  |
| 46 |  | Main Uis | 1d? | 2022-11-09 | 2022-11-09 | 45 |  | 30.5d |  |
| 47 | 1.2.4 | **Front-end** | 17d? | 2022-11-15 | 2022-12-07 |  |  | 1d |  |
| 48 | 1.2.4.1 | **Authentication** | 6d? | 2022-11-16 | 2022-11-23 |  |  |  |  |
| 49 |  | Register | 2d | 2022-11-16 | 2022-11-18 | 45, 16, 42 |  | 40d |  |
| 50 |  | Login | 2d | 2022-11-16 | 2022-11-18 | 45, 42, 17 |  | 26.5d |  |
| 51 | 1.2.4.2 | **Main features** | 17d? | 2022-11-15 | 2022-12-07 |  |  | 27d |  |
| 52 |  | Device Controller module | 4d | 2022-11-22 | 2022-11-29 | 50 |  | 26d |  |
| 53 |  | Automation module | 4d? | 2022-11-30 | 2022-12-07 | 52 |  | 26.5d |  |
| 54 | 1.2.4.2.3 | **Bug fixes** | 17d | 2022-11-15 | 2022-12-07 |  |  | 27d |  |
| 55 |  | Bug fixes 1 | 1d | 2022-11-15 | 2022-11-15 |  |  | 42.5d | start no earlier than 2022-11-15 |
| 56 |  | Bug fixes 2 | 1d | 2022-11-16 | 2022-11-16 |  |  | 41.5d | start no earlier than 2022-11-16 |
| 57 |  | Bug fixes 3 | 1d | 2022-11-17 | 2022-11-18 |  |  | 40d | start no earlier than 2022-11-17 |
| 58 |  | Bug fixes 4 | 1d | 2022-11-18 | 2022-11-22 |  |  | 38.5d | start no earlier than 2022-11-18 |
| 59 |  | Bug fixes 5 | 1d | 2022-11-22 | 2022-11-22 |  |  | 37.5d | start no earlier than 2022-11-21 |
| 60 |  | Bug fixes 6 | 1d | 2022-11-22 | 2022-11-22 |  |  | 37.5d | start no earlier than 2022-11-22 |
| 61 |  | Bug fixes 7 | 1d | 2022-11-23 | 2022-11-23 |  |  | 36.5d | start no earlier than 2022-11-23 |
| 62 |  | Bug fixes 8 | 1d | 2022-11-24 | 2022-11-25 |  |  | 35d | start no earlier than 2022-11-24 |
| 63 |  | Bug fixes 9 | 1d | 2022-11-25 | 2022-11-29 |  |  | 33.5d | start no earlier than 2022-11-25 |
| 64 |  | Bug fixes 10 | 1d | 2022-11-29 | 2022-11-29 |  |  | 32.5d | start no earlier than 2022-11-28 |
| 65 |  | Bug fixes 11 | 1d | 2022-11-29 | 2022-11-29 |  |  | 32.5d | start no earlier than 2022-11-29 |
| 66 |  | Bug fixes 12 | 1d | 2022-11-30 | 2022-11-30 |  |  | 31.5d | start no earlier than 2022-11-30 |
| 67 |  | Bug fixes 13 | 1d | 2022-12-01 | 2022-12-02 |  |  | 30d | start no earlier than 2022-12-01 |
| 68 |  | Bug fixes 14 | 1d | 2022-12-02 | 2022-12-06 |  |  | 28.5d | start no earlier than 2022-12-02 |
| 69 |  | Bug fixes 15 | 1d | 2022-12-06 | 2022-12-06 |  |  | 27.5d | start no earlier than 2022-12-05 |
| 70 |  | Bug fixes 16 | 1d | 2022-12-07 | 2022-12-07 |  |  | 26.5d | start no earlier than 2022-12-07 |

| ID | WBS | Task | Duration | Start | Finish | Predecessors | Total float | Constraint |
| --- | --- | --- | --- | --- | --- | --- | --- | --- |
| 71 | 1.2.5 | **Circuits** | 17d | 2022-11-04 | 2022-11-28 |  | 34d |  |
| 72 |  | Build the circuit from design | 4d | 2022-11-04 | 2022-11-09 | 2 | 44d |  |
| 73 |  | Create connection to the application | 2d | 2022-11-10 | 2022-11-11 | 72 | 44d |  |
| 74 | 1.2.5.3 | **Resolve problems** | 11d | 2022-11-14 | 2022-11-28 | 73 | 34d |  |
| 75 |  | Resolve problems 1 | 1d | 2022-11-14 | 2022-11-14 |  | 44d | start no earlier than 2022-11-14 |
| 76 |  | Resolve problems 2 | 1d | 2022-11-15 | 2022-11-15 |  | 43d | start no earlier than 2022-11-15 |
| 77 |  | Resolve problems 3 | 1d | 2022-11-16 | 2022-11-16 |  | 42d | start no earlier than 2022-11-16 |
| 78 |  | Resolve problems 4 | 1d | 2022-11-17 | 2022-11-17 |  | 41d | start no earlier than 2022-11-17 |
| 79 |  | Resolve problems 5 | 1d | 2022-11-18 | 2022-11-18 |  | 40d | start no earlier than 2022-11-18 |
| 80 |  | Resolve problems 6 | 1d | 2022-11-21 | 2022-11-21 |  | 39d | start no earlier than 2022-11-21 |
| 81 |  | Resolve problems 7 | 1d | 2022-11-22 | 2022-11-22 |  | 38d | start no earlier than 2022-11-22 |
| 82 |  | Resolve problems 8 | 1d | 2022-11-23 | 2022-11-23 |  | 37d | start no earlier than 2022-11-23 |
| 83 |  | Resolve problems 9 | 1d | 2022-11-24 | 2022-11-24 |  | 36d | start no earlier than 2022-11-24 |
| 84 |  | Resolve problems 10 | 1d | 2022-11-25 | 2022-11-25 |  | 35d | start no earlier than 2022-11-25 |
| 85 |  | Resolve problems 11 | 1d | 2022-11-28 | 2022-11-28 |  | 34d | start no earlier than 2022-11-28 |
| 86 | 1.2.6 | **Others** | 25d? | 2022-11-04 | 2022-12-08 |  | 0d |  |
| 87 | 1.2.6.1 | **Meeting (3 workdays period)** | 23d | 2022-11-04 | 2022-12-07 |  | 28d |  |
| 88 |  | Meeting 1 | 0d | 2022-11-04 | 2022-11-04 |  | 51d | start no earlier than 2022-11-03 |
| 89 |  | Meeting 2 | 0d | 2022-11-08 | 2022-11-08 |  | 49d | start no earlier than 2022-11-08 |
| 90 |  | Meeting 3 | 0d | 2022-11-11 | 2022-11-11 |  | 46d | start no earlier than 2022-11-11 |
| 91 |  | Meeting 4 | 0d | 2022-11-16 | 2022-11-16 |  | 43d | start no earlier than 2022-11-16 |
| 92 |  | Meeting 5 | 0d | 2022-11-21 | 2022-11-21 |  | 40d | start no earlier than 2022-11-21 |
| 93 |  | Meeting 6 | 0d | 2022-11-24 | 2022-11-24 |  | 37d | start no earlier than 2022-11-24 |
| 94 |  | Meeting 7 | 0d | 2022-11-29 | 2022-11-29 |  | 34d | start no earlier than 2022-11-29 |
| 95 |  | Meeting 8 | 0d | 2022-12-02 | 2022-12-02 |  | 31d | start no earlier than 2022-12-02 |
| 96 |  | Meeting 9 | 0d | 2022-12-07 | 2022-12-07 |  | 28d | start no earlier than 2022-12-07 |
| 97 | 1.2.6.2 | **Testing** | 25d? | 2022-11-04 | 2022-12-08 |  |  |  |
| 98 |  | Back-end | 10d | 2022-11-04 | 2022-11-17 |  | 26d |  |
| 99 |  | Front-end | 15d | 2022-11-18 | 2022-12-08 | 98 | 26d |  |
| 100 |  | Circuits | 15d | 2022-11-18 | 2022-12-08 | 98 | 26d |  |
| 101 | 1.3 | **Deployment Phase** | 5d? | 2022-12-09 | 2022-12-15 |  |  |  |
| 102 | 1.3.1 | **Annouce to users** | 2d? | 2022-12-09 | 2022-12-12 |  | 26d |  |
| 103 |  | Deployment schedule | 1d? | 2022-12-09 | 2022-12-09 | 100, 10 | 26d |  |
| 104 |  | Brief discription of new system | 1d? | 2022-12-12 | 2022-12-12 | 103 | 26d |  |
| 105 |  | Execute the Training Plan | 1d? | 2022-12-13 | 2022-12-13 | 103, 104 | 26d |  |
| 106 |  | Install the system | 1d? | 2022-12-14 | 2022-12-14 | 105 | 26d |  |
| 107 |  | Post-Deployment Review | 1d? | 2022-12-15 | 2022-12-15 | 106 | 26d |  |

## Version 2 (data date 2022-11-26, saved 2022-11-27, file lab4_IOTProject.mpp)

Note of the change: Commit all mpp files

Last finish 2023-01-20 → 2023-02-24 (+35d). Complete tasks 0 → 54.

Changed:

| ID | Task | Start | Finish | Duration | Complete | Total float | Predecessors | Other |
| --- | --- | --- | --- | --- | --- | --- | --- | --- |
| 1 | **IoT system** |  | 2023-01-20 → 2023-02-24 (+35d) | 3mo? → 85d | 1% → 45% |  |  | baseline start none → 2022-10-31; baseline finish none → 2023-02-24 |
| 2 | **Pre-development phase** | 2022-10-31 A |  | 4d? → 4d | 0% → 99% |  |  | baseline start none → 2022-10-31; baseline finish none → 2022-11-03 |
| 3 | Analysis and design | 2022-10-31 A | 2022-10-31 A |  | 0% → 100% |  |  | baseline start none → 2022-10-31; baseline finish none → 2022-10-31 |
| 4 | **Documents** | 2022-11-01 A | 2022-11-03 → 2022-11-02 A (-1d) | 3d? → 2d | 0% → 100% |  |  | baseline start none → 2022-11-01; baseline finish none → 2022-11-02 |
| 5 | Database design | 2022-11-01 A | 2022-11-02 A | 1.5d? → 1d | 0% → 100% | 0.76d → none |  | baseline start none → 2022-11-01; baseline finish none → 2022-11-02 |
| 6 | Software design | 2022-11-01 A | 2022-11-01 A | 1d? → 1d | 0% → 100% | 3.75d → none | none → 3 | baseline start none → 2022-11-01; baseline finish none → 2022-11-01 |
| 7 | Circuit design | 2022-11-01 A | 2022-11-01 A | 1d? → 1d | 0% → 100% | 46d → none | none → 3 | baseline start none → 2022-11-01; baseline finish none → 2022-11-01 |
| 8 | Requirements | 2022-11-01 A | 2022-11-01 A | 1d? → 1d | 0% → 100% | 3.75d → none |  | baseline start none → 2022-11-01; baseline finish none → 2022-11-01 |
| 9 | First meeting | 2022-11-03 A |  |  | 0% → 60% | 2.75d → 81.88d | 5, 6, 8 → 5, 6, 8, 7 | baseline start none → 2022-11-03; baseline finish none → 2022-11-03 |
| 10 | **Development phase** | 2022-11-04 A → 2022-11-03 A (-1d) | 2022-12-08 → 2023-02-20 (+74d) | 25d? → 78d | 1% → 45% |  |  | baseline start none → 2022-11-03; baseline finish none → 2023-02-20 |
| 11 | **Database setup** |  | 2022-11-09 A |  | 44% → 100% | 28d → none |  | baseline start none → 2022-11-04; baseline finish none → 2022-11-09 |
| 12 | Users module |  | 2022-11-07 A |  | 88% → 100% | 27d → none |  | baseline start none → 2022-11-04; baseline finish none → 2022-11-07 |
| 13 | Device management module | 2022-11-09 A | 2022-11-09 A |  | 0% → 100% | 28d → none |  | baseline start none → 2022-11-09; baseline finish none → 2022-11-09 |
| 14 | **Backend** | 2022-11-10 A |  | 20.88d? → 20.88d | 0% → 79% | 0d → 56.12d |  | baseline start none → 2022-11-10; baseline finish none → 2022-12-08 |
| 15 | **Authentication** | 2022-11-14 A | 2022-11-15 A |  | 0% → 100% | 26d → none |  | baseline start none → 2022-11-14; baseline finish none → 2022-11-15 |
| 16 | Register | 2022-11-14 A | 2022-11-15 A |  | 0% → 100% | 36d → none | 11 → 13 | baseline start none → 2022-11-14; baseline finish none → 2022-11-15 |
| 17 | Login | 2022-11-14 A | 2022-11-15 A |  | 0% → 100% | 26d → none | 11 → 13 | baseline start none → 2022-11-14; baseline finish none → 2022-11-15 |
| 18 | **Main features** | 2022-11-16 A | 2022-11-22 A | 5d? → 5d | 0% → 100% | 36d → none |  | baseline start none → 2022-11-16; baseline finish none → 2022-11-22 |
| 19 | Device Controller module | 2022-11-16 A | 2022-11-22 A | 3d? → 3d | 0% → 100% | 36d → none | 15 → 16, 17 | baseline start none → 2022-11-16; baseline finish none → 2022-11-22 |
| 20 | Automation module | 2022-11-16 A | 2022-11-21 A | 2d? → 2d | 0% → 100% | 37d → none | 15 → 16, 17 | baseline start none → 2022-11-16; baseline finish none → 2022-11-21 |
| 21 | **Bug fixes** |  |  |  | 0% → 60% |  |  | baseline start none → 2022-11-15; baseline finish none → 2022-12-08 |
| 22 | Bug fixes 1 | 2022-11-10 A | 2022-11-10 A |  | 0% → 100% | 51.5d → none |  | baseline start none → 2022-11-10; baseline finish none → 2022-11-10 |
| 23 | Bug fixes 2 | 2022-11-11 A | 2022-11-11 A |  | 0% → 100% | 50.5d → none |  | baseline start none → 2022-11-11; baseline finish none → 2022-11-11 |
| 24 | Bug fixes 3 | 2022-11-14 A | 2022-11-14 A |  | 0% → 100% | 49.5d → none |  | baseline start none → 2022-11-14; baseline finish none → 2022-11-14 |
| 25 | Bug fixes 4 | 2022-11-15 A | 2022-11-15 A |  | 0% → 100% | 48.5d → none |  | baseline start none → 2022-11-15; baseline finish none → 2022-11-15 |
| 26 | Bug fixes 5 | 2022-11-16 A | 2022-11-16 A |  | 0% → 100% | 47.5d → none |  | baseline start none → 2022-11-16; baseline finish none → 2022-11-16 |
| 27 | Bug fixes 6 | 2022-11-17 A | 2022-11-17 A |  | 0% → 100% | 46.5d → none |  | baseline start none → 2022-11-17; baseline finish none → 2022-11-17 |
| 28 | Bug fixes 7 | 2022-11-18 A | 2022-11-18 A |  | 0% → 100% | 45.5d → none |  | baseline start none → 2022-11-18; baseline finish none → 2022-11-18 |
| 29 | Bug fixes 8 | 2022-11-21 A | 2022-11-21 A |  | 0% → 100% | 44.5d → none |  | baseline start none → 2022-11-21; baseline finish none → 2022-11-21 |
| 30 | Bug fixes 9 | 2022-11-22 A | 2022-11-22 A |  | 0% → 100% | 43.5d → none |  | baseline start none → 2022-11-22; baseline finish none → 2022-11-22 |
| 31 | Bug fixes 10 | 2022-11-23 A | 2022-11-23 A |  | 0% → 100% | 42.5d → none |  | baseline start none → 2022-11-23; baseline finish none → 2022-11-23 |
| 32 | Bug fixes 11 | 2022-11-24 A | 2022-11-24 A |  | 0% → 100% | 41.5d → none |  | baseline start none → 2022-11-24; baseline finish none → 2022-11-24 |
| 33 | Bug fixes 12 | 2022-11-25 A | 2022-11-25 A |  | 0% → 100% | 40.5d → none |  | baseline start none → 2022-11-25; baseline finish none → 2022-11-25 |
| 34 | Bug fixes 13 |  |  |  |  | 39.5d → 64.5d |  | baseline start none → 2022-11-28; baseline finish none → 2022-11-28 |
| 35 | Bug fixes 14 |  |  |  |  | 38.5d → 63.5d |  | baseline start none → 2022-11-29; baseline finish none → 2022-11-29 |
| 36 | Bug fixes 15 |  |  |  |  | 37.5d → 62.5d |  | baseline start none → 2022-11-30; baseline finish none → 2022-11-30 |
| 37 | Bug fixes 16 |  |  |  |  | 36.5d → 61.5d |  | baseline start none → 2022-12-01; baseline finish none → 2022-12-01 |
| 38 | Bug fixes 17 |  |  |  |  | 35.5d → 60.5d |  | baseline start none → 2022-12-02; baseline finish none → 2022-12-02 |
| 39 | Bug fixes 18 |  |  |  |  | 34.5d → 59.5d |  | baseline start none → 2022-12-05; baseline finish none → 2022-12-05 |
| 40 | Bug fixes 19 |  |  |  |  | 33.5d → 58.5d |  | baseline start none → 2022-12-06; baseline finish none → 2022-12-06 |
| 41 | Bug fixes 20 |  |  |  |  | 32.5d → 57.5d |  | baseline start none → 2022-12-07; baseline finish none → 2022-12-07 |
| 42 | **UI / UX designing** | 2022-11-04 → 2022-11-03 A (-1d) | 2022-11-09 A | 4d? → 4d | 0% → 100% | 30.5d → none |  | baseline start none → 2022-11-03; baseline finish none → 2022-11-09 |
| 43 | Color scheme | 2022-11-04 → 2022-11-03 A (-1d) | 2022-11-07 A | 2d? → 2d | 0% → 100% | 30.5d → none |  | baseline start none → 2022-11-03; baseline finish none → 2022-11-07 |
| 44 | **App** | 2022-11-08 → 2022-11-07 A (-1d) | 2022-11-09 A | 2d? → 2d | 0% → 100% | 30.5d → none |  | baseline start none → 2022-11-07; baseline finish none → 2022-11-09 |
| 45 | Wireframe | 2022-11-08 → 2022-11-07 A (-1d) | 2022-11-08 A | 1d? → 1d | 0% → 100% | 30.5d → none |  | baseline start none → 2022-11-07; baseline finish none → 2022-11-08 |
| 46 | Main Uis | 2022-11-09 → 2022-11-08 A (-1d) | 2022-11-09 A | 1d? → 1d | 0% → 100% | 30.5d → none |  | baseline start none → 2022-11-08; baseline finish none → 2022-11-09 |
| 47 | **Front-end** | 2022-11-15 A | 2022-12-07 → 2022-12-14 (+7d) | 17d? → 22d | 0% → 45% | 1d → 52d |  | baseline start none → 2022-11-15; baseline finish none → 2022-12-14 |
| 48 | **Authentication** | 2022-11-16 → 2022-11-23 A (+7d) | 2022-11-23 → 2022-11-25 A (+2d) | 6d? → 3d | 0% → 100% |  |  | baseline start none → 2022-11-23; baseline finish none → 2022-11-25 |
| 49 | Register | 2022-11-16 → 2022-11-23 A (+7d) | 2022-11-18 → 2022-11-25 A (+7d) |  | 0% → 100% | 40d → none | 45, 16, 42 → 46, 19, 20 | baseline start none → 2022-11-23; baseline finish none → 2022-11-25 |
| 50 | Login | 2022-11-16 → 2022-11-23 A (+7d) | 2022-11-18 → 2022-11-25 A (+7d) |  | 0% → 100% | 26.5d → none | 45, 42, 17 → 46, 19, 20 | baseline start none → 2022-11-23; baseline finish none → 2022-11-25 |
| 51 | **Main features** | 2022-11-15 A | 2022-12-07 → 2022-12-14 (+7d) | 17d? → 22d | 0% → 35% | 27d → 52d |  | baseline start none → 2022-11-15; baseline finish none → 2022-12-14 |
| 52 | Device Controller module | 2022-11-22 → 2022-11-29 (+7d) | 2022-11-29 → 2022-12-06 (+7d) |  |  | 26d → 21d | 50 → 50, 49 | baseline start none → 2022-11-29; baseline finish none → 2022-12-06 |
| 53 | Automation module | 2022-11-30 → 2022-12-07 (+7d) | 2022-12-07 → 2022-12-14 (+7d) | 4d? → 4d |  | 26.5d → 21.5d |  | baseline start none → 2022-12-07; baseline finish none → 2022-12-14 |
| 54 | **Bug fixes** | 2022-11-15 A |  |  | 0% → 53% | 27d → 57d |  | baseline start none → 2022-11-15; baseline finish none → 2022-12-07 |
| 55 | Bug fixes 1 | 2022-11-15 A | 2022-11-15 A |  | 0% → 100% | 42.5d → none |  | baseline start none → 2022-11-15; baseline finish none → 2022-11-15 |
| 56 | Bug fixes 2 | 2022-11-16 A | 2022-11-16 A |  | 0% → 100% | 41.5d → none |  | baseline start none → 2022-11-16; baseline finish none → 2022-11-16 |
| 57 | Bug fixes 3 | 2022-11-17 A | 2022-11-18 A |  | 0% → 100% | 40d → none |  | baseline start none → 2022-11-17; baseline finish none → 2022-11-18 |
| 58 | Bug fixes 4 | 2022-11-18 A | 2022-11-22 A |  | 0% → 100% | 38.5d → none |  | baseline start none → 2022-11-18; baseline finish none → 2022-11-22 |
| 59 | Bug fixes 5 | 2022-11-22 A | 2022-11-22 A |  | 0% → 100% | 37.5d → none |  | baseline start none → 2022-11-22; baseline finish none → 2022-11-22 |
| 60 | Bug fixes 6 | 2022-11-22 A | 2022-11-22 A |  | 0% → 100% | 37.5d → none |  | baseline start none → 2022-11-22; baseline finish none → 2022-11-22 |
| 61 | Bug fixes 7 | 2022-11-23 A | 2022-11-23 A |  | 0% → 100% | 36.5d → none |  | baseline start none → 2022-11-23; baseline finish none → 2022-11-23 |
| 62 | Bug fixes 8 | 2022-11-24 A | 2022-11-25 A |  | 0% → 100% | 35d → none |  | baseline start none → 2022-11-24; baseline finish none → 2022-11-25 |
| 63 | Bug fixes 9 | 2022-11-25 A |  |  | 0% → 50% | 33.5d → 63.5d |  | baseline start none → 2022-11-25; baseline finish none → 2022-11-29 |
| 64 | Bug fixes 10 |  |  |  |  | 32.5d → 62.5d |  | baseline start none → 2022-11-29; baseline finish none → 2022-11-29 |
| 65 | Bug fixes 11 |  |  |  |  | 32.5d → 62.5d |  | baseline start none → 2022-11-29; baseline finish none → 2022-11-29 |
| 66 | Bug fixes 12 |  |  |  |  | 31.5d → 61.5d |  | baseline start none → 2022-11-30; baseline finish none → 2022-11-30 |
| 67 | Bug fixes 13 |  |  |  |  | 30d → 60d |  | baseline start none → 2022-12-01; baseline finish none → 2022-12-02 |
| 68 | Bug fixes 14 |  |  |  |  | 28.5d → 58.5d |  | baseline start none → 2022-12-02; baseline finish none → 2022-12-06 |
| 69 | Bug fixes 15 |  |  |  |  | 27.5d → 57.5d |  | baseline start none → 2022-12-06; baseline finish none → 2022-12-06 |
| 70 | Bug fixes 16 |  |  |  |  | 26.5d → 56.5d |  | baseline start none → 2022-12-07; baseline finish none → 2022-12-07 |

| ID | Task | Start | Finish | Duration | Complete | Total float | Predecessors | Other |
| --- | --- | --- | --- | --- | --- | --- | --- | --- |
| 71 | **Circuits** | 2022-11-04 A |  |  | 0% → 94% |  |  | baseline start none → 2022-11-04; baseline finish none → 2022-11-28 |
| 72 | Build the circuit from design | 2022-11-04 A | 2022-11-09 A |  | 0% → 100% | 44d → none |  | baseline start none → 2022-11-04; baseline finish none → 2022-11-09 |
| 73 | Create connection to the application | 2022-11-10 A | 2022-11-11 A |  | 0% → 100% | 44d → none |  | baseline start none → 2022-11-10; baseline finish none → 2022-11-11 |
| 74 | **Resolve problems** | 2022-11-14 A |  |  | 0% → 91% |  | 73 → none | baseline start none → 2022-11-14; baseline finish none → 2022-11-28 |
| 75 | Resolve problems 1 | 2022-11-14 A | 2022-11-14 A |  | 0% → 100% | 44d → none | none → 73 | baseline start none → 2022-11-14; baseline finish none → 2022-11-14 |
| 76 | Resolve problems 2 | 2022-11-15 A | 2022-11-15 A |  | 0% → 100% | 43d → none | none → 75 | baseline start none → 2022-11-15; baseline finish none → 2022-11-15 |
| 77 | Resolve problems 3 | 2022-11-16 A | 2022-11-16 A |  | 0% → 100% | 42d → none | none → 76 | baseline start none → 2022-11-16; baseline finish none → 2022-11-16 |
| 78 | Resolve problems 4 | 2022-11-17 A | 2022-11-17 A |  | 0% → 100% | 41d → none | none → 77 | baseline start none → 2022-11-17; baseline finish none → 2022-11-17 |
| 79 | Resolve problems 5 | 2022-11-18 A | 2022-11-18 A |  | 0% → 100% | 40d → none | none → 78 | baseline start none → 2022-11-18; baseline finish none → 2022-11-18 |
| 80 | Resolve problems 6 | 2022-11-21 A | 2022-11-21 A |  | 0% → 100% | 39d → none | none → 79 | baseline start none → 2022-11-21; baseline finish none → 2022-11-21 |
| 81 | Resolve problems 7 | 2022-11-22 A | 2022-11-22 A |  | 0% → 100% | 38d → none | none → 80 | baseline start none → 2022-11-22; baseline finish none → 2022-11-22 |
| 82 | Resolve problems 8 | 2022-11-23 A | 2022-11-23 A |  | 0% → 100% | 37d → none | none → 81 | baseline start none → 2022-11-23; baseline finish none → 2022-11-23 |
| 83 | Resolve problems 9 | 2022-11-24 A | 2022-11-24 A |  | 0% → 100% | 36d → none | none → 82 | baseline start none → 2022-11-24; baseline finish none → 2022-11-24 |
| 84 | Resolve problems 10 | 2022-11-25 A | 2022-11-25 A |  | 0% → 100% | 35d → none | none → 83 | baseline start none → 2022-11-25; baseline finish none → 2022-11-25 |
| 85 | Resolve problems 11 |  |  |  |  |  | none → 84 | baseline start none → 2022-11-28; baseline finish none → 2022-11-28 |
| 86 | **Others** | 2022-11-04 → 2022-11-03 A (-1d) | 2022-12-08 → 2023-02-16 (+70d) | 25d? → 76d |  | 0d → 6d |  | baseline start none → 2022-11-03; baseline finish none → 2023-02-16 |
| 87 | **Meeting (3 workdays period)** | 2022-11-04 → 2022-11-03 A (-1d) |  | 23d → 24d |  | 28d → 58d |  | baseline start none → 2022-11-03; baseline finish none → 2022-12-07 |
| 88 | Meeting 1 | 2022-11-04 → 2022-11-03 A (-1d) | 2022-11-04 → 2022-11-03 A (-1d) |  | 0% → 100% | 51d → none |  | baseline start none → 2022-11-03; baseline finish none → 2022-11-03 |
| 89 | Meeting 2 | 2022-11-08 A | 2022-11-08 A |  | 0% → 100% | 49d → none |  | baseline start none → 2022-11-08; baseline finish none → 2022-11-08 |
| 90 | Meeting 3 | 2022-11-11 A | 2022-11-11 A |  | 0% → 100% | 46d → none |  | baseline start none → 2022-11-11; baseline finish none → 2022-11-11 |
| 91 | Meeting 4 | 2022-11-16 A | 2022-11-16 A |  | 0% → 100% | 43d → none |  | baseline start none → 2022-11-16; baseline finish none → 2022-11-16 |
| 92 | Meeting 5 | 2022-11-21 A | 2022-11-21 A |  | 0% → 100% | 40d → none |  | baseline start none → 2022-11-21; baseline finish none → 2022-11-21 |
| 93 | Meeting 6 | 2022-11-24 A | 2022-11-24 A |  | 0% → 100% | 37d → none |  | baseline start none → 2022-11-24; baseline finish none → 2022-11-24 |
| 94 | Meeting 7 |  |  |  |  | 34d → 64d |  | baseline start none → 2022-11-29; baseline finish none → 2022-11-29 |
| 95 | Meeting 8 |  |  |  |  | 31d → 61d |  | baseline start none → 2022-12-02; baseline finish none → 2022-12-02 |
| 96 | Meeting 9 |  |  |  |  | 28d → 58d |  | baseline start none → 2022-12-07; baseline finish none → 2022-12-07 |
| 97 | **Testing** | 2022-11-04 → 2023-01-07 (+64d) | 2022-12-08 → 2023-02-16 (+70d) | 25d? → 30d |  |  |  | baseline start none → 2023-01-07; baseline finish none → 2023-02-16 |
| 98 | Back-end | 2022-11-04 → 2023-01-09 (+66d) | 2022-11-17 → 2023-01-20 (+64d) |  |  | 26d → 5d | none → 53, 85 | baseline start none → 2023-01-09; baseline finish none → 2023-01-20 |
| 99 | Front-end | 2022-11-18 → 2023-01-23 (+66d) | 2022-12-08 → 2023-02-10 (+64d) |  |  | 26d → 5d |  | baseline start none → 2023-01-23; baseline finish none → 2023-02-10 |
| 100 | Circuits | 2022-11-18 → 2023-01-23 (+66d) | 2022-12-08 → 2023-02-10 (+64d) |  |  | 26d → 5d |  | baseline start none → 2023-01-23; baseline finish none → 2023-02-10 |
| 101 | **Deployment Phase** | 2022-12-09 → 2023-02-13 (+66d) | 2022-12-15 → 2023-02-20 (+67d) | 5d? → 6d |  |  |  | baseline start none → 2023-02-13; baseline finish none → 2023-02-20 |
| 102 | **Annouce to users** | 2022-12-09 → 2023-02-13 (+66d) | 2022-12-12 → 2023-02-14 (+64d) | 2d? → 2d |  | 26d → 5d |  | baseline start none → 2023-02-13; baseline finish none → 2023-02-14 |
| 103 | Deployment schedule | 2022-12-09 → 2023-02-13 (+66d) | 2022-12-09 → 2023-02-13 (+66d) | 1d? → 1d |  | 26d → 5d | 100, 10 → 100, 99 | baseline start none → 2023-02-13; baseline finish none → 2023-02-13 |
| 104 | Brief discription of new system | 2022-12-12 → 2023-02-14 (+64d) | 2022-12-12 → 2023-02-14 (+64d) | 1d? → 1d |  | 26d → 5d |  | baseline start none → 2023-02-14; baseline finish none → 2023-02-14 |
| 105 | Execute the Training Plan | 2022-12-13 → 2023-02-15 (+64d) | 2022-12-13 → 2023-02-15 (+64d) | 1d? → 1d |  | 26d → 5d | 103, 104 → 104 | baseline start none → 2023-02-15; baseline finish none → 2023-02-15 |
| 106 | Install the system | 2022-12-14 → 2023-02-16 (+64d) | 2022-12-14 → 2023-02-16 (+64d) | 1d? → 1d |  | 26d → 5d |  | baseline start none → 2023-02-16; baseline finish none → 2023-02-16 |
| 107 | Post-Deployment Review | 2022-12-15 → 2023-02-17 (+64d) | 2022-12-15 → 2023-02-17 (+64d) | 1d? → 1d |  | 26d → 5d |  | baseline start none → 2023-02-17; baseline finish none → 2023-02-17 |

## Version 3 (data date 2022-11-22, saved 2022-12-03, file Lab4.mpp)

Last finish 2023-02-24 → 2023-01-20 (-35d). Complete tasks 54 → 42.

Changed:

| ID | Task | Start | Finish | Duration | Complete | Total float | Predecessors | Other |
| --- | --- | --- | --- | --- | --- | --- | --- | --- |
| 1 | **IoT system** |  | 2023-02-24 → 2023-01-20 (-35d) | 85d → 3mo? | 45% → 51% |  |  | baseline finish 2023-02-24 → 2023-01-20 |
| 2 | **Pre-development phase** |  | 2022-11-03 A | 4d → 4d? | 99% → 100% |  |  |  |
| 4 | **Documents** |  | 2022-11-02 A → 2022-11-03 (+1d) | 2d → 3d? |  |  |  | baseline finish 2022-11-02 → 2022-11-03 |
| 5 | Database design |  |  | 1d → 1.5d? |  |  |  |  |
| 6 | Software design |  |  | 1d → 1d? |  |  | 3 → none |  |
| 7 | Circuit design |  |  | 1d → 1d? |  |  | 3 → none |  |
| 8 | Requirements |  |  | 1d → 1d? |  |  |  |  |
| 9 | First meeting |  | 2022-11-03 A |  | 60% → 100% | 81.88d → none | 5, 6, 8, 7 → 5, 6, 8 |  |
| 10 | **Development phase** | 2022-11-03 A → 2022-11-04 A (+1d) | 2023-02-20 → 2022-12-08 (-74d) | 78d → 25d? | 45% → 51% |  |  | baseline start 2022-11-03 → 2022-11-04; baseline finish 2023-02-20 → 2022-12-08 |
| 14 | **Backend** |  |  | 20.88d → 20.88d? | 79% → 66% | 56.12d → 31.12d |  |  |
| 15 | **Authentication** |  | 2022-11-15 A → 2022-11-16 (+1d) | 2d → 3d | 100% → 80% | none → 40d |  |  |
| 16 | Register |  |  |  |  |  | 13 → 11 |  |
| 17 | Login |  | 2022-11-15 A → 2022-11-16 (+1d) | 2d → 3d | 100% → 67% | none → 40d | 13 → 11 |  |
| 18 | **Main features** |  | 2022-11-22 A → 2022-11-21 A (-1d) | 5d → 4d? |  |  |  |  |
| 19 | Device Controller module |  | 2022-11-22 A → 2022-11-21 A (-1d) | 3d → 2d |  |  | 16, 17 → 15 |  |
| 20 | Automation module |  |  | 2d → 2d? |  |  | 16, 17 → 15 |  |
| 21 | **Bug fixes** |  |  |  | 60% → 45% |  |  |  |
| 31 | Bug fixes 10 | 2022-11-23 A → 2022-11-23 | 2022-11-23 A → 2022-11-23 |  | 100% → 0% | none → 42.5d |  |  |
| 32 | Bug fixes 11 | 2022-11-24 A → 2022-11-24 | 2022-11-24 A → 2022-11-24 |  | 100% → 0% | none → 41.5d |  |  |
| 33 | Bug fixes 12 | 2022-11-25 A → 2022-11-25 | 2022-11-25 A → 2022-11-25 |  | 100% → 0% | none → 40.5d |  |  |
| 42 | **UI / UX designing** | 2022-11-03 A → 2022-11-04 A (+1d) | 2022-11-09 A → 2022-11-14 (+5d) | 4d → 7d? | 100% → 57% | none → 44d |  | baseline start 2022-11-03 → 2022-11-04 |
| 43 | Color scheme | 2022-11-03 A → 2022-11-04 A (+1d) |  | 2d → 2d? |  |  |  | baseline start 2022-11-03 → 2022-11-04 |
| 44 | **App** | 2022-11-07 A → 2022-11-08 A (+1d) | 2022-11-09 A → 2022-11-14 (+5d) | 2d → 5d? | 100% → 40% | none → 44d |  | baseline start 2022-11-07 → 2022-11-08 |
| 45 | Wireframe | 2022-11-07 A → 2022-11-08 A (+1d) | 2022-11-08 A → 2022-11-14 (+6d) | 1d → 4d? | 100% → 25% | none → 44d |  | baseline start 2022-11-07 → 2022-11-08 |
| 46 | Main Uis | 2022-11-08 A → 2022-11-09 A (+1d) |  | 1d → 1d? |  |  |  | baseline start 2022-11-08 → 2022-11-09 |
| 47 | **Front-end** |  | 2022-12-14 → 2022-12-07 (-7d) | 22d → 17d? | 45% → 38% | 52d → 27d |  | baseline finish 2022-12-14 → 2022-12-07 |
| 48 | **Authentication** | 2022-11-23 A → 2022-11-16 A (-7d) | 2022-11-25 A → 2022-11-23 (-2d) | 3d → 6d? |  |  |  | baseline start 2022-11-23 → 2022-11-16; baseline finish 2022-11-25 → 2022-11-23 |
| 49 | Register | 2022-11-23 A → 2022-11-16 A (-7d) | 2022-11-25 A → 2022-11-18 A (-7d) |  |  |  | 46, 19, 20 → 45, 16, 42 | baseline start 2022-11-23 → 2022-11-16; baseline finish 2022-11-25 → 2022-11-18 |
| 50 | Login | 2022-11-23 A → 2022-11-16 A (-7d) | 2022-11-25 A → 2022-11-18 A (-7d) |  |  |  | 46, 19, 20 → 45, 42, 17 | baseline start 2022-11-23 → 2022-11-16; baseline finish 2022-11-25 → 2022-11-18 |
| 51 | **Main features** |  | 2022-12-14 → 2022-12-07 (-7d) | 22d → 17d? | 35% → 28% | 52d → 27d |  | baseline finish 2022-12-14 → 2022-12-07 |
| 52 | Device Controller module | 2022-11-29 → 2022-11-22 A (-7d) | 2022-12-06 → 2022-11-29 (-7d) |  | 0% → 22% | 21d → 26d | 50, 49 → 50 | baseline start 2022-11-29 → 2022-11-22; baseline finish 2022-12-06 → 2022-11-29 |
| 53 | Automation module | 2022-12-07 → 2022-11-30 (-7d) | 2022-12-14 → 2022-12-07 (-7d) | 4d → 4d? |  | 21.5d → 26.5d |  | baseline start 2022-12-07 → 2022-11-30; baseline finish 2022-12-14 → 2022-12-07 |
| 54 | **Bug fixes** |  |  |  | 53% → 36% | 57d → 27d |  |  |
| 59 | Bug fixes 5 |  | 2022-11-22 A → 2022-11-22 |  | 100% → 88% | none → 38d |  |  |
| 60 | Bug fixes 6 |  | 2022-11-22 A → 2022-11-22 |  | 100% → 88% | none → 38d |  |  |
| 61 | Bug fixes 7 | 2022-11-23 A → 2022-11-23 | 2022-11-23 A → 2022-11-23 |  | 100% → 0% | none → 36.5d |  |  |
| 62 | Bug fixes 8 | 2022-11-24 A → 2022-11-24 | 2022-11-25 A → 2022-11-25 |  | 100% → 0% | none → 35d |  |  |
| 63 | Bug fixes 9 | 2022-11-25 A → 2022-11-25 |  |  | 50% → 0% | 63.5d → 33.5d |  |  |
| 71 | **Circuits** |  |  |  | 94% → 76% |  |  |  |
| 74 | **Resolve problems** |  |  |  | 91% → 63% |  | none → 73 |  |
| 75 | Resolve problems 1 |  |  |  |  |  | 73 → none |  |
| 76 | Resolve problems 2 |  |  |  |  |  | 75 → none |  |
| 77 | Resolve problems 3 |  |  |  |  |  | 76 → none |  |
| 78 | Resolve problems 4 |  |  |  |  |  | 77 → none |  |
| 79 | Resolve problems 5 |  |  |  |  |  | 78 → none |  |
| 80 | Resolve problems 6 |  |  |  |  |  | 79 → none |  |
| 81 | Resolve problems 7 |  | 2022-11-22 A → 2022-11-22 |  | 100% → 88% | none → 38d | 80 → none |  |
| 82 | Resolve problems 8 | 2022-11-23 A → 2022-11-23 | 2022-11-23 A → 2022-11-23 |  | 100% → 0% | none → 37d | 81 → none |  |
| 83 | Resolve problems 9 | 2022-11-24 A → 2022-11-24 | 2022-11-24 A → 2022-11-24 |  | 100% → 0% | none → 36d | 82 → none |  |
| 84 | Resolve problems 10 | 2022-11-25 A → 2022-11-25 | 2022-11-25 A → 2022-11-25 |  | 100% → 0% | none → 35d | 83 → none |  |
| 85 | Resolve problems 11 |  |  |  |  |  | 84 → none |  |
| 86 | **Others** | 2022-11-03 A → 2022-11-04 A (+1d) | 2023-02-16 → 2022-12-08 (-70d) | 76d → 25d? | 0% → 39% | 6d → 26d |  | baseline start 2022-11-03 → 2022-11-04; baseline finish 2023-02-16 → 2022-12-08 |
| 87 | **Meeting (3 workdays period)** | 2022-11-03 A → 2022-11-04 A (+1d) |  | 24d → 23d |  | 58d → 28d |  | baseline start 2022-11-03 → 2022-11-04 |
| 88 | Meeting 1 | 2022-11-03 A → 2022-11-04 A (+1d) | 2022-11-03 A → 2022-11-04 A (+1d) |  |  |  |  | baseline start 2022-11-03 → 2022-11-04; baseline finish 2022-11-03 → 2022-11-04 |
| 93 | Meeting 6 | 2022-11-24 A → 2022-11-24 | 2022-11-24 A → 2022-11-24 |  | 100% → 0% | none → 37d |  |  |
| 97 | **Testing** | 2023-01-07 → 2022-11-04 A (-64d) | 2023-02-16 → 2022-12-08 (-70d) | 30d → 25d? | 0% → 39% |  |  | baseline start 2023-01-07 → 2022-11-04; baseline finish 2023-02-16 → 2022-12-08 |
| 98 | Back-end | 2023-01-09 → 2022-11-04 A (-66d) | 2023-01-20 → 2022-11-17 A (-64d) |  | 0% → 100% | 5d → none | 53, 85 → none | baseline start 2023-01-09 → 2022-11-04; baseline finish 2023-01-20 → 2022-11-17 |
| 99 | Front-end | 2023-01-23 → 2022-11-18 A (-66d) | 2023-02-10 → 2022-12-08 (-64d) |  | 0% → 19% | 5d → 26d |  | baseline start 2023-01-23 → 2022-11-18; baseline finish 2023-02-10 → 2022-12-08 |
| 100 | Circuits | 2023-01-23 → 2022-11-18 A (-66d) | 2023-02-10 → 2022-12-08 (-64d) |  | 0% → 19% | 5d → 26d |  | baseline start 2023-01-23 → 2022-11-18; baseline finish 2023-02-10 → 2022-12-08 |
| 101 | **Deployment Phase** | 2023-02-13 → 2022-12-09 (-66d) | 2023-02-20 → 2022-12-15 (-67d) | 6d → 5d? |  |  |  | baseline start 2023-02-13 → 2022-12-09; baseline finish 2023-02-20 → 2022-12-15 |
| 102 | **Annouce to users** | 2023-02-13 → 2022-12-09 (-66d) | 2023-02-14 → 2022-12-12 (-64d) | 2d → 2d? |  | 5d → 26d |  | baseline start 2023-02-13 → 2022-12-09; baseline finish 2023-02-14 → 2022-12-12 |
| 103 | Deployment schedule | 2023-02-13 → 2022-12-09 (-66d) | 2023-02-13 → 2022-12-09 (-66d) | 1d → 1d? |  | 5d → 26d | 100, 99 → 100, 10 | baseline start 2023-02-13 → 2022-12-09; baseline finish 2023-02-13 → 2022-12-09 |
| 104 | Brief discription of new system | 2023-02-14 → 2022-12-12 (-64d) | 2023-02-14 → 2022-12-12 (-64d) | 1d → 1d? |  | 5d → 26d |  | baseline start 2023-02-14 → 2022-12-12; baseline finish 2023-02-14 → 2022-12-12 |
| 105 | Execute the Training Plan | 2023-02-15 → 2022-12-13 (-64d) | 2023-02-15 → 2022-12-13 (-64d) | 1d → 1d? |  | 5d → 26d | 104 → 103, 104 | baseline start 2023-02-15 → 2022-12-13; baseline finish 2023-02-15 → 2022-12-13 |
| 106 | Install the system | 2023-02-16 → 2022-12-14 (-64d) | 2023-02-16 → 2022-12-14 (-64d) | 1d → 1d? |  | 5d → 26d |  | baseline start 2023-02-16 → 2022-12-14; baseline finish 2023-02-16 → 2022-12-14 |
| 107 | Post-Deployment Review | 2023-02-17 → 2022-12-15 (-64d) | 2023-02-17 → 2022-12-15 (-64d) | 1d → 1d? |  | 5d → 26d |  | baseline start 2023-02-17 → 2022-12-15; baseline finish 2023-02-17 → 2022-12-15 |

## Version 4 (data date 2022-12-03, saved 2022-12-03, file lab5_IOTProject.mpp)

Note of the change: Commit all mpp files

Last finish 2023-01-20 → 2023-02-24 (+35d). Complete tasks 42 → 67.

Changed:

| ID | Task | Start | Finish | Duration | Complete | Total float | Predecessors | Other |
| --- | --- | --- | --- | --- | --- | --- | --- | --- |
| 1 | **IoT system** |  | 2023-01-20 → 2023-02-24 (+35d) | 3mo? → 85d | 51% → 55% |  |  | baseline finish 2023-01-20 → 2023-02-24 |
| 2 | **Pre-development phase** |  | 2022-11-03 A → 2022-11-03 | 4d? → 4d | 100% → 99% |  |  |  |
| 4 | **Documents** |  | 2022-11-03 → 2022-11-02 A (-1d) | 3d? → 2d |  |  |  | baseline finish 2022-11-03 → 2022-11-02 |
| 5 | Database design |  |  | 1.5d? → 1d |  |  |  |  |
| 6 | Software design |  |  | 1d? → 1d |  |  | none → 3 |  |
| 7 | Circuit design |  |  | 1d? → 1d |  |  | none → 3 |  |
| 8 | Requirements |  |  | 1d? → 1d |  |  |  |  |
| 9 | First meeting |  | 2022-11-03 A → 2022-11-03 |  | 100% → 60% | none → 81.88d | 5, 6, 8 → 5, 6, 8, 7 |  |
| 10 | **Development phase** | 2022-11-04 A → 2022-11-03 A (-1d) | 2022-12-08 → 2023-02-20 (+74d) | 25d? → 78d | 51% → 55% |  |  | baseline start 2022-11-04 → 2022-11-03; baseline finish 2022-12-08 → 2023-02-20 |
| 14 | **Backend** |  |  | 20.88d? → 20.88d | 66% → 92% | 31.12d → 56.12d |  |  |
| 15 | **Authentication** |  | 2022-11-16 → 2022-11-15 A (-1d) | 3d → 2d | 80% → 100% | 40d → none |  |  |
| 16 | Register |  |  |  |  |  | 11 → 13 |  |
| 17 | Login |  | 2022-11-16 → 2022-11-15 A (-1d) | 3d → 2d | 67% → 100% | 40d → none | 11 → 13 |  |
| 18 | **Main features** |  | 2022-11-21 A → 2022-11-22 A (+1d) | 4d? → 5d |  |  |  |  |
| 19 | Device Controller module |  | 2022-11-21 A → 2022-11-22 A (+1d) | 2d → 3d |  |  | 15 → 16, 17 |  |
| 20 | Automation module |  |  | 2d? → 2d |  |  | 15 → 16, 17 |  |
| 21 | **Bug fixes** |  |  |  | 45% → 85% |  |  |  |
| 31 | Bug fixes 10 | 2022-11-23 A | 2022-11-23 A |  | 0% → 100% | 42.5d → none |  |  |
| 32 | Bug fixes 11 | 2022-11-24 A | 2022-11-24 A |  | 0% → 100% | 41.5d → none |  |  |
| 33 | Bug fixes 12 | 2022-11-25 A | 2022-11-25 A |  | 0% → 100% | 40.5d → none |  |  |
| 34 | Bug fixes 13 | 2022-11-28 A | 2022-11-28 A |  | 0% → 100% | 39.5d → none |  |  |
| 35 | Bug fixes 14 | 2022-11-29 A | 2022-11-29 A |  | 0% → 100% | 38.5d → none |  |  |
| 36 | Bug fixes 15 | 2022-11-30 A | 2022-11-30 A |  | 0% → 100% | 37.5d → none |  |  |
| 37 | Bug fixes 16 | 2022-12-01 A | 2022-12-01 A |  | 0% → 100% | 36.5d → none |  |  |
| 38 | Bug fixes 17 | 2022-12-02 A | 2022-12-02 A |  | 0% → 100% | 35.5d → none |  |  |
| 42 | **UI / UX designing** | 2022-11-04 A → 2022-11-03 A (-1d) | 2022-11-14 → 2022-11-09 A (-5d) | 7d? → 4d | 57% → 100% | 44d → none |  | baseline start 2022-11-04 → 2022-11-03 |
| 43 | Color scheme | 2022-11-04 A → 2022-11-03 A (-1d) |  | 2d? → 2d |  |  |  | baseline start 2022-11-04 → 2022-11-03 |
| 44 | **App** | 2022-11-08 A → 2022-11-07 A (-1d) | 2022-11-14 → 2022-11-09 A (-5d) | 5d? → 2d | 40% → 100% | 44d → none |  | baseline start 2022-11-08 → 2022-11-07 |
| 45 | Wireframe | 2022-11-08 A → 2022-11-07 A (-1d) | 2022-11-14 → 2022-11-08 A (-6d) | 4d? → 1d | 25% → 100% | 44d → none |  | baseline start 2022-11-08 → 2022-11-07 |
| 46 | Main Uis | 2022-11-09 A → 2022-11-08 A (-1d) |  | 1d? → 1d |  |  |  | baseline start 2022-11-09 → 2022-11-08 |
| 47 | **Front-end** |  | 2022-12-07 → 2022-12-14 (+7d) | 17d? → 22d | 38% → 73% | 27d → 52d |  | baseline finish 2022-12-07 → 2022-12-14 |
| 48 | **Authentication** | 2022-11-16 A → 2022-11-23 A (+7d) | 2022-11-23 → 2022-11-25 A (+2d) | 6d? → 3d |  |  |  | baseline start 2022-11-16 → 2022-11-23; baseline finish 2022-11-23 → 2022-11-25 |
| 49 | Register | 2022-11-16 A → 2022-11-23 A (+7d) | 2022-11-18 A → 2022-11-25 A (+7d) |  |  |  | 45, 16, 42 → 46, 19, 20 | baseline start 2022-11-16 → 2022-11-23; baseline finish 2022-11-18 → 2022-11-25 |
| 50 | Login | 2022-11-16 A → 2022-11-23 A (+7d) | 2022-11-18 A → 2022-11-25 A (+7d) |  |  |  | 45, 42, 17 → 46, 19, 20 | baseline start 2022-11-16 → 2022-11-23; baseline finish 2022-11-18 → 2022-11-25 |
| 51 | **Main features** |  | 2022-12-07 → 2022-12-14 (+7d) | 17d? → 22d | 28% → 69% | 27d → 52d |  | baseline finish 2022-12-07 → 2022-12-14 |
| 52 | Device Controller module | 2022-11-22 A → 2022-11-29 A (+7d) | 2022-11-29 → 2022-12-06 (+7d) |  | 22% → 75% | 26d → 21d | 50 → 50, 49 | baseline start 2022-11-22 → 2022-11-29; baseline finish 2022-11-29 → 2022-12-06 |
| 53 | Automation module | 2022-11-30 → 2022-12-07 (+7d) | 2022-12-07 → 2022-12-14 (+7d) | 4d? → 4d |  | 26.5d → 21.5d |  | baseline start 2022-11-30 → 2022-12-07; baseline finish 2022-12-07 → 2022-12-14 |
| 54 | **Bug fixes** |  |  |  | 36% → 84% | 27d → 57d |  |  |
| 59 | Bug fixes 5 |  | 2022-11-22 A |  | 88% → 100% | 38d → none |  |  |
| 60 | Bug fixes 6 |  | 2022-11-22 A |  | 88% → 100% | 38d → none |  |  |
| 61 | Bug fixes 7 | 2022-11-23 A | 2022-11-23 A |  | 0% → 100% | 36.5d → none |  |  |
| 62 | Bug fixes 8 | 2022-11-24 A | 2022-11-25 A |  | 0% → 100% | 35d → none |  |  |
| 63 | Bug fixes 9 | 2022-11-25 A | 2022-11-29 A |  | 0% → 100% | 33.5d → none |  |  |
| 64 | Bug fixes 10 | 2022-11-29 A | 2022-11-29 A |  | 0% → 100% | 32.5d → none |  |  |
| 65 | Bug fixes 11 | 2022-11-29 A | 2022-11-29 A |  | 0% → 100% | 32.5d → none |  |  |
| 66 | Bug fixes 12 | 2022-11-30 A | 2022-11-30 A |  | 0% → 100% | 31.5d → none |  |  |
| 67 | Bug fixes 13 | 2022-12-01 A | 2022-12-02 A |  | 0% → 100% | 30d → none |  |  |
| 68 | Bug fixes 14 | 2022-12-02 A |  |  | 0% → 50% | 28.5d → 58.5d |  |  |
| 71 | **Circuits** |  | 2022-11-28 A |  | 76% → 100% | 34d → none |  |  |
| 74 | **Resolve problems** |  | 2022-11-28 A |  | 63% → 100% | 34d → none | 73 → none |  |
| 75 | Resolve problems 1 |  |  |  |  |  | none → 73 |  |
| 76 | Resolve problems 2 |  |  |  |  |  | none → 75 |  |
| 77 | Resolve problems 3 |  |  |  |  |  | none → 76 |  |
| 78 | Resolve problems 4 |  |  |  |  |  | none → 77 |  |
| 79 | Resolve problems 5 |  |  |  |  |  | none → 78 |  |
| 80 | Resolve problems 6 |  |  |  |  |  | none → 79 |  |
| 81 | Resolve problems 7 |  | 2022-11-22 A |  | 88% → 100% | 38d → none | none → 80 |  |
| 82 | Resolve problems 8 | 2022-11-23 A | 2022-11-23 A |  | 0% → 100% | 37d → none | none → 81 |  |
| 83 | Resolve problems 9 | 2022-11-24 A | 2022-11-24 A |  | 0% → 100% | 36d → none | none → 82 |  |
| 84 | Resolve problems 10 | 2022-11-25 A | 2022-11-25 A |  | 0% → 100% | 35d → none | none → 83 |  |
| 85 | Resolve problems 11 | 2022-11-28 A | 2022-11-28 A |  | 0% → 100% | 34d → none | none → 84 |  |
| 86 | **Others** | 2022-11-04 A → 2022-11-03 A (-1d) | 2022-12-08 → 2023-02-16 (+70d) | 25d? → 76d | 39% → 0% | 26d → 6d |  | baseline start 2022-11-04 → 2022-11-03; baseline finish 2022-12-08 → 2023-02-16 |
| 87 | **Meeting (3 workdays period)** | 2022-11-04 A → 2022-11-03 A (-1d) |  | 23d → 24d |  | 28d → 58d |  | baseline start 2022-11-04 → 2022-11-03 |
| 88 | Meeting 1 | 2022-11-04 A → 2022-11-03 A (-1d) | 2022-11-04 A → 2022-11-03 A (-1d) |  |  |  |  | baseline start 2022-11-04 → 2022-11-03; baseline finish 2022-11-04 → 2022-11-03 |
| 93 | Meeting 6 | 2022-11-24 A | 2022-11-24 A |  | 0% → 100% | 37d → none |  |  |
| 94 | Meeting 7 | 2022-11-29 A | 2022-11-29 A |  | 0% → 100% | 34d → none |  |  |
| 95 | Meeting 8 | 2022-12-02 A | 2022-12-02 A |  | 0% → 100% | 31d → none |  |  |
| 97 | **Testing** | 2022-11-04 A → 2023-01-07 (+64d) | 2022-12-08 → 2023-02-16 (+70d) | 25d? → 30d | 39% → 0% |  |  | baseline start 2022-11-04 → 2023-01-07; baseline finish 2022-12-08 → 2023-02-16 |
| 98 | Back-end | 2022-11-04 A → 2023-01-09 (+66d) | 2022-11-17 A → 2023-01-20 (+64d) |  | 100% → 0% | none → 5d | none → 53, 85 | baseline start 2022-11-04 → 2023-01-09; baseline finish 2022-11-17 → 2023-01-20 |
| 99 | Front-end | 2022-11-18 A → 2023-01-23 (+66d) | 2022-12-08 → 2023-02-10 (+64d) |  | 19% → 0% | 26d → 5d |  | baseline start 2022-11-18 → 2023-01-23; baseline finish 2022-12-08 → 2023-02-10 |

| ID | Task | Start | Finish | Duration | Complete | Total float | Predecessors | Other |
| --- | --- | --- | --- | --- | --- | --- | --- | --- |
| 100 | Circuits | 2022-11-18 A → 2023-01-23 (+66d) | 2022-12-08 → 2023-02-10 (+64d) |  | 19% → 0% | 26d → 5d |  | baseline start 2022-11-18 → 2023-01-23; baseline finish 2022-12-08 → 2023-02-10 |
| 101 | **Deployment Phase** | 2022-12-09 → 2023-02-13 (+66d) | 2022-12-15 → 2023-02-20 (+67d) | 5d? → 6d |  |  |  | baseline start 2022-12-09 → 2023-02-13; baseline finish 2022-12-15 → 2023-02-20 |
| 102 | **Annouce to users** | 2022-12-09 → 2023-02-13 (+66d) | 2022-12-12 → 2023-02-14 (+64d) | 2d? → 2d |  | 26d → 5d |  | baseline start 2022-12-09 → 2023-02-13; baseline finish 2022-12-12 → 2023-02-14 |
| 103 | Deployment schedule | 2022-12-09 → 2023-02-13 (+66d) | 2022-12-09 → 2023-02-13 (+66d) | 1d? → 1d |  | 26d → 5d | 100, 10 → 100, 99 | baseline start 2022-12-09 → 2023-02-13; baseline finish 2022-12-09 → 2023-02-13 |
| 104 | Brief discription of new system | 2022-12-12 → 2023-02-14 (+64d) | 2022-12-12 → 2023-02-14 (+64d) | 1d? → 1d |  | 26d → 5d |  | baseline start 2022-12-12 → 2023-02-14; baseline finish 2022-12-12 → 2023-02-14 |
| 105 | Execute the Training Plan | 2022-12-13 → 2023-02-15 (+64d) | 2022-12-13 → 2023-02-15 (+64d) | 1d? → 1d |  | 26d → 5d | 103, 104 → 104 | baseline start 2022-12-13 → 2023-02-15; baseline finish 2022-12-13 → 2023-02-15 |
| 106 | Install the system | 2022-12-14 → 2023-02-16 (+64d) | 2022-12-14 → 2023-02-16 (+64d) | 1d? → 1d |  | 26d → 5d |  | baseline start 2022-12-14 → 2023-02-16; baseline finish 2022-12-14 → 2023-02-16 |
| 107 | Post-Deployment Review | 2022-12-15 → 2023-02-17 (+64d) | 2022-12-15 → 2023-02-17 (+64d) | 1d? → 1d |  | 26d → 5d |  | baseline start 2022-12-15 → 2023-02-17; baseline finish 2022-12-15 → 2023-02-17 |
